# HANIA_INCREMENTAL_MODEL

How a schedule from MS Project changed from version to version. A marks actual dates.

## Version 1 (saved 2024-10-05)

Note of the change: added more MS-Project tasks

| ID | WBS | Task | Duration | Start | Finish | Predecessors | Complete |
| --- | --- | --- | --- | --- | --- | --- | --- |
| 1 |  | E-COMMERCE WEBSITE | 17d | 2024-08-27 A | 2024-09-18 A |  | 100% |
| 2 | 2 | **Increment 1: User Management** | 13d | 2024-08-27 A | 2024-09-13 A |  | 100% |
| 3 | 2.1 | **Requirements:** | 2d | 2024-08-27 A | 2024-08-28 A |  | 100% |
| 4 |  | User registration and login | 1d | 2024-08-27 A | 2024-08-27 A |  | 100% |
| 5 |  | User profile management | 1d | 2024-08-28 A | 2024-08-28 A | 4 | 100% |
| 6 | 2.2 | **Design:** | 3d | 2024-08-29 A | 2024-09-02 A | 3 | 100% |
| 7 |  | User interface design for registration and login pages | 2d | 2024-08-29 A | 2024-08-30 A |  | 100% |
| 8 |  | Database design for storing user information | 1d | 2024-09-02 A | 2024-09-02 A | 7 | 100% |
| 9 | 2.3 | **Development:** | 6d | 2024-09-03 A | 2024-09-10 A | 6 | 100% |
| 10 |  | Develop user registration and login functionality | 3d | 2024-09-03 A | 2024-09-05 A |  | 100% |
| 11 |  | Implement user profile management | 3d | 2024-09-06 A | 2024-09-10 A | 10 | 100% |
| 12 | 2.4 | **Testing:** | 2d | 2024-09-11 A | 2024-09-12 A | 9 | 100% |
| 13 |  | Test user registration and login functionality | 1d | 2024-09-11 A | 2024-09-11 A |  | 100% |
| 14 |  | Validate user profile management | 1d | 2024-09-12 A | 2024-09-12 A | 13 | 100% |
| 15 |  | USER MANAGEMENT COMPLETED | 0d | 2024-09-13 A | 2024-09-13 A | 14 | 100% |
| 16 | 3 | **Increment 2: Product Catalog** | 4d | 2024-09-13 A | 2024-09-18 A |  | 100% |
| 17 | 3.1 | **Requirements:** | 2d | 2024-09-13 A | 2024-09-16 A |  | 100% |
| 18 |  | Product search and filtering | 1d | 2024-09-13 A | 2024-09-13 A |  | 100% |
| 19 |  | Product details page | 1d | 2024-09-16 A | 2024-09-16 A | 18 | 100% |
| 20 | 3.2 | **Design:** | 2d | 2024-09-13 A | 2024-09-16 A |  | 100% |
| 21 |  | User interface design for search and filtering | 1d | 2024-09-13 A | 2024-09-13 A |  | 100% |
| 22 |  | Database design for storing product information | 1d | 2024-09-16 A | 2024-09-16 A | 21 | 100% |
| 23 | 3.3 | **Development:** | 4d | 2024-09-13 A | 2024-09-18 A |  | 100% |
| 24 |  | Develop product search and filtering functionality | 2d | 2024-09-13 A | 2024-09-16 A |  | 100% |
| 25 |  | Implement product details page | 2d | 2024-09-17 A | 2024-09-18 A | 24 | 100% |
| 26 | 3.4 | **Testing:** | 3d | 2024-09-13 A | 2024-09-17 A |  | 100% |
| 27 |  | Test product search and filtering functionality | 2d | 2024-09-13 A | 2024-09-16 A |  | 100% |
| 28 |  | Validate product details page | 1d | 2024-09-17 A | 2024-09-17 A | 27 | 100% |
| 29 |  | PRODUCT CATLOG COMPLETED | 0d | 2024-09-18 A | 2024-09-18 A | 28 | 100% |
| 30 | 4 | **Increment 3: Payment Processing** | 6d | 2024-09-19 A | 2024-09-27 A | 16 | 100% |
| 31 | 4.1 | **Requirements:** | 5d | 2024-09-19 A | 2024-09-25 A |  | 100% |
| 32 |  | Secure payment processing | 2d | 2024-09-19 A | 2024-09-20 A |  | 100% |
| 33 |  | Payment gateway integration | 3d | 2024-09-23 A | 2024-09-25 A | 32 | 100% |
| 34 | 4.2 | **Design:** | 5d | 2024-09-19 A | 2024-09-25 A |  | 100% |
| 35 |  | System architecture for integrating with payment gateways | 3d | 2024-09-19 A | 2024-09-23 A |  | 100% |
| 36 |  | Database design for storing order data | 2d | 2024-09-24 A | 2024-09-25 A | 35 | 100% |
| 37 | 4.3 | **Development:** | 6d | 2024-09-19 A | 2024-09-26 A |  | 100% |
| 38 |  | Integrate with payment gateways | 3d | 2024-09-19 A | 2024-09-23 A |  | 100% |
| 39 |  | Implement secure payment processing | 3d | 2024-09-24 A | 2024-09-26 A | 38 | 100% |
| 40 | 4.4 | **Testing:** | 2d | 2024-09-19 A | 2024-09-20 A |  | 100% |
| 41 |  | Test payment processing functionality | 1d | 2024-09-19 A | 2024-09-19 A |  | 100% |
| 42 |  | Validate payment gateway integration | 1d | 2024-09-20 A | 2024-09-20 A | 41 | 100% |
| 43 |  | PAYMENT PROCESSING COMPLETED | 0d | 2024-09-27 A | 2024-09-27 A | 42 | 100% |
| 44 | 5 | **Increment 4: Order Management** | 4d | 2024-09-27 A | 2024-10-02 A | 30 | 100% |
| 45 | 5.1 | **Requirements:** | 4d | 2024-09-27 A | 2024-10-02 A |  | 100% |
| 46 |  | Order placement and management | 2d | 2024-09-27 A | 2024-09-30 A |  | 100% |
| 47 |  | Order tracking and history | 2d | 2024-10-01 A | 2024-10-02 A | 46 | 100% |
| 48 | 5.2 | **Design:** | 3d | 2024-09-27 A | 2024-10-01 A |  | 100% |
| 49 |  | User interface design for order placement and management | 2d | 2024-09-27 A | 2024-09-30 A |  | 100% |
| 50 |  | Database design for storing order data | 1d | 2024-10-01 A | 2024-10-01 A | 49 | 100% |
| 51 | 5.3 | **Development:** | 3d | 2024-09-27 A | 2024-10-01 A |  | 100% |
| 52 |  | Develop order placement and management functionality | 1d | 2024-09-27 A | 2024-09-27 A |  | 100% |
| 53 |  | Implement order tracking and history | 2d | 2024-09-30 A | 2024-10-01 A | 52 | 100% |
| 54 | 5.4 | **Testing:** | 2d | 2024-09-27 A | 2024-09-30 A |  | 100% |
| 55 |  | Test order placement and management functionality | 1d | 2024-09-27 A | 2024-09-27 A |  | 100% |
| 56 |  | Validate order tracking and history | 1d | 2024-09-30 A | 2024-09-30 A | 55 | 100% |
| 57 |  | ORDER MANAGEMENT COMPLETED | 0d | 2024-10-01 A | 2024-10-01 A | 56 | 100% |

## Version 2 (saved 2024-10-12)

Last finish stays 2024-10-02.

Changed:

| ID | Task | Finish | Duration | Predecessors | Other |
| --- | --- | --- | --- | --- | --- |
| 1 | E-COMMERCE WEBSITE | 2024-09-18 A → 2024-10-02 A (+14d) | 17d → 27d |  | resources Ali; Bob; Michael; Sam; Hana; Ahmed; Sofia; Soha; Sara; Jane; Maha; Adobe Creative Cloud; AWS; Git; Google Cloud; JIRA; MySQL; PayPal; PIM System; SSL certificates; Stripe; TestRail; Visual Studio → Ali; Bob; Michael; Sam; Hana; Ahmed; Sofia; Soha; Sara; Jane; Maha; Adobe Creative Cloud [200%]; AWS [200%]; Git [200%]; Google Cloud [200%]; JIRA [200%]; MySQL [200%]; PayPal [200%]; PIM System [200%]; SSL certificates [200%]; Stripe [200%]; TestRail [200%]; Visual Studio [200%] |
| 30 | **Increment 3: Payment Processing** |  |  | 16 → none |  |

## Version 3 (saved 2024-10-29)

Last finish stays 2024-10-02. Complete tasks 37 → 36.

Removed: 1 E-COMMERCE WEBSITE

Changed:

| ID | Task | Predecessors |
| --- | --- | --- |
| 15 | **Increment 2: Product Catalog** | none → 1 |
| 19 | **Design:** | none → 16 |
| 22 | **Development:** | none → 19 |
| 25 | **Testing:** | none → 22 |
| 29 | **Increment 3: Payment Processing** | none → 15 |
| 33 | **Design:** | none → 30 |
| 36 | **Development:** | none → 33 |
| 39 | **Testing:** | none → 36 |
| 47 | **Design:** | none → 44 |
| 50 | **Development:** | none → 47 |
| 53 | **Testing:** | none → 50 |
